# Cronograma Versão4.0

How a schedule from MS Project changed from version to version. A marks actual dates.

## Version 1 (saved 2016-06-03)

Note of the change: Sies

| ID | WBS | Task | Duration | Start | Finish | Predecessors | Complete | Total float |
| --- | --- | --- | --- | --- | --- | --- | --- | --- |
| 1 | 1 | **Projeto SIES - Sistema Integrado de Estacionamentos** | 31.19d | 2016-05-02 13:00 A | 2016-06-14 14:30 |  | 61% | 0d |
| 2 | 1.1 | **Prospecção** | 1.38d | 2016-05-02 13:00 A | 2016-05-03 16:00 A |  | 100% |  |
| 3 | 1.1.1 | **PTEC** | 1d | 2016-05-02 13:00 A | 2016-05-03 13:00 A |  | 100% |  |
| 4 |  | Estudar Dominio da Aplicação | 1h | 2016-05-02 13:00 A | 2016-05-02 14:00 A |  | 100% |  |
| 5 |  | Reunir-se com Fornecedor de Requisitos | 1h | 2016-05-02 14:00 A | 2016-05-02 15:00 A | 4 | 100% |  |
| 6 |  | Redigir PTEC | 5h | 2016-05-02 15:00 A | 2016-05-03 11:00 A | 5 | 100% |  |
| 7 |  | Revisar PTEC | 1h | 2016-05-03 11:00 A | 2016-05-03 12:00 A | 6 | 100% |  |
| 8 |  | Aprovar PTEC | 0h | 2016-05-03 13:00 A | 2016-05-03 13:00 A | 7 | 100% |  |
| 9 | 1.1.2 | **Est. Prel. De Tamanho** | 0.38d | 2016-05-03 13:00 A | 2016-05-03 16:00 A |  | 100% |  |
| 10 |  | Redigir Termo de Abertura do Projeto | 1h | 2016-05-03 13:00 A | 2016-05-03 14:00 A | 8 | 100% |  |
| 11 |  | Estimar do tamanho do Projeto | 1h | 2016-05-03 14:00 A | 2016-05-03 15:00 A | 10 | 100% |  |
| 12 |  | Revisar Estimativa do Tamanho do Projeto | 1h | 2016-05-03 15:00 A | 2016-05-03 16:00 A | 11 | 100% |  |
| 13 | 1.1.3 | **Est. Prel. De Cronograma e Orçamento** | 0.25d | 2016-05-03 13:00 A | 2016-05-03 15:00 A |  | 100% |  |
| 14 |  | Elaborar Cronograma de Orçamento Preliminar | 1h | 2016-05-03 13:00 A | 2016-05-03 14:00 A | 7 | 100% |  |
| 15 |  | Revisar Cronograma de Orçamento Preliminar | 1h | 2016-05-03 14:00 A | 2016-05-03 15:00 A | 14 | 100% |  |
| 16 | 1.2 | **Analise** | 4.5d | 2016-05-03 16:00 A | 2016-05-10 11:00 A | 2 | 100% |  |
| 17 |  | Redigir Documentos de Requisito | 14h | 2016-05-03 16:00 A | 2016-05-05 14:00 A |  | 100% |  |
| 18 |  | Redigir Matriz de Rastreabilidade Bidirecional | 16h | 2016-05-06 11:00 A | 2016-05-10 11:00 A | 17 | 100% |  |
| 19 |  | Redigir Cronograma e Orçamento Definitivo | 16h | 2016-05-06 11:00 A | 2016-05-10 11:00 A | 17 | 100% |  |
| 20 | 1.3 | **Desenvolvimento** | 25.31d | 2016-05-10 11:00 A | 2016-06-14 14:30 | 16 | 27% | 0d |
| 21 |  | Implementar Crudes RF Manter Usuário | 11.5h | 2016-05-10 11:00 A | 2016-05-13 10:30 A |  | 100% |  |
| 22 |  | Implementar Crudes RF Manter Convênio | 6.36h | 2016-05-13 10:30 A | 2016-05-19 10:51 A | 21 | 100% |  |
| 23 |  | Implementar Crudes RF Manter Vagas | 5h | 2016-05-16 09:00 | 2016-05-17 10:00 | 21 |  | 20.44d |
| 24 |  | Implementar Crudes RF Manter Cliente | 6.25h | 2016-05-19 10:51 | 2016-05-23 09:06 | 21, 22 |  | 0d |
| 25 |  | Implementar Crudes RF Manter Credito Cliente | 7.5h | 2016-05-27 09:00 | 2016-05-30 14:30 | 21, 24 |  | 0d |
| 26 |  | Implementar Crudes RF Controlar Aluguel de Vagas | 7.5h | 2016-05-30 14:30 | 2016-06-01 14:00 | 21, 24, 25 |  | 0d |
| 27 |  | Implementar Crudes RF Gerar Relátorio Financeiro | 7.5h | 2016-06-01 14:00 | 2016-06-03 13:30 | 21, 22, 26 |  | 7.12d |
| 28 |  | Implementar Crudes RF Manter Histórico do Cliente | 7.5h | 2016-05-23 09:06 | 2016-05-24 14:36 | 21, 24 |  | 14.99d |
| 29 |  | Implementar Crudes RF Manter Fluxo de Caixa | 7.5h | 2016-06-13 09:00 | 2016-06-14 14:30 | 26, 21 |  | 0d |

## Version 2 (saved 2016-06-11)

Note of the change: Função Atendimento Veículos Inicial

Last finish 2016-06-14 → 2016-06-22 (+8d). Complete tasks 15 → 21.

Added:

| ID | Task | Duration | Start | Finish | Predecessors | Resources |
| --- | --- | --- | --- | --- | --- | --- |
| 21 | **Release 1** | 7.3d? | 2016-05-10 A | 2016-05-19 A |  |  |
| 22 | **Implementação** | 6.3d | 2016-05-10 A | 2016-05-18 A |  |  |
| 25 | **Testes** | 5.05d? | 2016-05-12 A | 2016-05-19 A |  |  |
| 26 | Teste Crudes RF Manter Usuário | 0.5d? | 2016-05-12 A | 2016-05-13 A | 23 | Felipe Alves; Kelly |
| 27 | Teste Crudes RF Manter Convênio | 0.5d? | 2016-05-18 A | 2016-05-19 A | 24 | Jonas; Ligia |
| 28 | **Release 2** | 6.05d? | 2016-05-16 A | 2016-05-24 A |  |  |
| 29 | **Implementação** | 4.05d | 2016-05-16 A | 2016-05-20 A |  |  |
| 32 | **Testes** | 5.45d? | 2016-05-16 A | 2016-05-24 A |  |  |
| 33 | Teste Implementar Crudes RF Manter Vagas | 1d? | 2016-05-16 A | 2016-05-18 A | 30 | Felipe Alves; Kelly |
| 34 | Teste Implementar Crudes RF Manter Cliente | 1d? | 2016-05-20 A | 2016-05-24 A | 31 | Jonas; Ligia |
| 35 | **Release 3** | 18.06d? | 2016-05-23 | 2016-06-16 |  |  |
| 36 | **Implementação** | 16.81d | 2016-05-23 | 2016-06-15 |  |  |
| 40 | **Testes** | 14.96d? | 2016-05-26 | 2016-06-16 |  |  |
| 41 | Teste Implementar Crudes RF Manter Credito Cliente | 0.31d? | 2016-05-26 | 2016-05-27 | 37 | Felipe Alves; Kelly |
| 42 | Teste Implementar Crudes RF Gerar Relátorio Financeiro | 0.62d? | 2016-06-15 | 2016-06-16 | 38 | Jonas |
| 43 | Teste Implementar Crudes RF Controlar Aluguel de Vagas | 0.62d? | 2016-06-07 | 2016-06-08 | 39 | Ligia |
| 44 | **Release 4** | 23.02d? | 2016-05-20 | 2016-06-22 |  |  |
| 45 | **Implementação** | 22.2d | 2016-05-20 | 2016-06-21 |  |  |
| 48 | **Testes** | 20.64d? | 2016-05-24 | 2016-06-22 |  |  |
| 49 | Teste Crudes RF Manter Histórico do Cliente | 0.31d? | 2016-05-24 | 2016-05-25 | 46 | Felipe Alves; Kelly |
| 50 | Teste Crudes RF Manter Fluxo de Caixa | 0.31d? | 2016-06-21 | 2016-06-22 | 47 | Jonas; Ligia |

Changed:

| ID | Task | Start | Finish | Duration | Complete | Total float | Other |
| --- | --- | --- | --- | --- | --- | --- | --- |
| 1 | **Projeto SIES - Sistema Integrado de Estacionamentos** | 2016-05-02 13:00 A → 2016-05-02 A | 2016-06-14 14:30 → 2016-06-22 (+8d) | 31.19d → 36.69d? | 61% → 51% |  | baseline start none → 2016-05-02; baseline finish none → 2016-06-22 |
| 2 | **Prospecção** | 2016-05-02 13:00 A → 2016-05-02 A | 2016-05-03 16:00 A → 2016-05-03 A |  |  |  | baseline start none → 2016-05-02; baseline finish none → 2016-05-03 |
| 3 | **PTEC** | 2016-05-02 13:00 A → 2016-05-02 A | 2016-05-03 13:00 A → 2016-05-03 A |  |  |  | baseline start none → 2016-05-02; baseline finish none → 2016-05-03 |
| 4 | Estudar Dominio da Aplicação | 2016-05-02 13:00 A → 2016-05-02 A | 2016-05-02 14:00 A → 2016-05-02 A |  |  |  | baseline start none → 2016-05-02; baseline finish none → 2016-05-02 |
| 5 | Reunir-se com Fornecedor de Requisitos | 2016-05-02 14:00 A → 2016-05-02 A | 2016-05-02 15:00 A → 2016-05-02 A |  |  |  | baseline start none → 2016-05-02; baseline finish none → 2016-05-02 |
| 6 | Redigir PTEC | 2016-05-02 15:00 A → 2016-05-02 A | 2016-05-03 11:00 A → 2016-05-03 A |  |  |  | baseline start none → 2016-05-02; baseline finish none → 2016-05-03 |
| 7 | Revisar PTEC | 2016-05-03 11:00 A → 2016-05-03 A | 2016-05-03 12:00 A → 2016-05-03 A |  |  |  | baseline start none → 2016-05-03; baseline finish none → 2016-05-03 |
| 8 | Aprovar PTEC | 2016-05-03 13:00 A → 2016-05-03 A | 2016-05-03 13:00 A → 2016-05-03 A |  |  |  | baseline start none → 2016-05-03; baseline finish none → 2016-05-03 |
| 9 | **Est. Prel. De Tamanho** | 2016-05-03 13:00 A → 2016-05-03 A | 2016-05-03 16:00 A → 2016-05-03 A |  |  |  | baseline start none → 2016-05-03; baseline finish none → 2016-05-03 |
| 10 | Redigir Termo de Abertura do Projeto | 2016-05-03 13:00 A → 2016-05-03 A | 2016-05-03 14:00 A → 2016-05-03 A |  |  |  | baseline start none → 2016-05-03; baseline finish none → 2016-05-03 |
| 11 | Estimar do tamanho do Projeto | 2016-05-03 14:00 A → 2016-05-03 A | 2016-05-03 15:00 A → 2016-05-03 A |  |  |  | baseline start none → 2016-05-03; baseline finish none → 2016-05-03 |
| 12 | Revisar Estimativa do Tamanho do Projeto | 2016-05-03 15:00 A → 2016-05-03 A | 2016-05-03 16:00 A → 2016-05-03 A |  |  |  | baseline start none → 2016-05-03; baseline finish none → 2016-05-03 |
| 13 | **Est. Prel. De Cronograma e Orçamento** | 2016-05-03 13:00 A → 2016-05-03 A | 2016-05-03 15:00 A → 2016-05-03 A |  |  |  | baseline start none → 2016-05-03; baseline finish none → 2016-05-03 |
| 14 | Elaborar Cronograma de Orçamento Preliminar | 2016-05-03 13:00 A → 2016-05-03 A | 2016-05-03 14:00 A → 2016-05-03 A |  |  |  | baseline start none → 2016-05-03; baseline finish none → 2016-05-03 |
| 15 | Revisar Cronograma de Orçamento Preliminar | 2016-05-03 14:00 A → 2016-05-03 A | 2016-05-03 15:00 A → 2016-05-03 A |  |  |  | baseline start none → 2016-05-03; baseline finish none → 2016-05-03 |
| 16 | **Analise** | 2016-05-03 16:00 A → 2016-05-03 A | 2016-05-10 11:00 A → 2016-05-10 A |  |  |  | baseline start none → 2016-05-03; baseline finish none → 2016-05-10 |
| 17 | Redigir Documentos de Requisito | 2016-05-03 16:00 A → 2016-05-03 A | 2016-05-05 14:00 A → 2016-05-05 A |  |  |  | baseline start none → 2016-05-03; baseline finish none → 2016-05-05 |
| 18 | Redigir Matriz de Rastreabilidade Bidirecional | 2016-05-06 11:00 A → 2016-05-06 A | 2016-05-10 11:00 A → 2016-05-10 A |  |  |  | baseline start none → 2016-05-06; baseline finish none → 2016-05-10 |
| 19 | Redigir Cronograma e Orçamento Definitivo | 2016-05-06 11:00 A → 2016-05-06 A | 2016-05-10 11:00 A → 2016-05-10 A |  |  |  | baseline start none → 2016-05-06; baseline finish none → 2016-05-10 |
| 20 | **Implementação** | 2016-05-10 11:00 A → 2016-05-10 A | 2016-06-14 14:30 → 2016-06-22 (+8d) | 25.31d → 30.81d? | 27% → 31% |  | was named Desenvolvimento; baseline start none → 2016-05-10; baseline finish none → 2016-06-22 |
| 23 | Implementar Crudes RF Manter Usuário | 2016-05-10 11:00 A → 2016-05-10 A | 2016-05-13 10:30 A → 2016-05-12 A (-1d) | 11.5h → 9h |  |  | baseline start none → 2016-05-10; baseline finish none → 2016-05-12 |
| 24 | Implementar Crudes RF Manter Convênio | 2016-05-13 10:30 A → 2016-05-13 A | 2016-05-19 10:51 A → 2016-05-18 A (-1d) | 6.36h → 3.86h |  |  | baseline start none → 2016-05-13; baseline finish none → 2016-05-18 |
| 30 | Implementar Crudes RF Manter Vagas | 2016-05-16 09:00 → 2016-05-16 A | 2016-05-17 10:00 → 2016-05-16 A (-1d) | 5h → 3.75h | 0% → 100% | 20.44d → none | baseline start none → 2016-05-16; baseline finish none → 2016-05-16 |
| 31 | Implementar Crudes RF Manter Cliente | 2016-05-19 10:51 → 2016-05-18 A (-1d) | 2016-05-23 09:06 → 2016-05-20 A (-3d) | 6.25h → 5h | 0% → 100% | 0d → none | baseline start none → 2016-05-18; baseline finish none → 2016-05-20 |
| 37 | Implementar Crudes RF Manter Credito Cliente | 2016-05-27 09:00 → 2016-05-23 (-4d) | 2016-05-30 14:30 → 2016-05-26 (-4d) | 7.5h → 12.5h |  | 0d → 1.09d | resources Ligia; Kelly; Felipe Alves; Jonas → Ligia; Jonas; baseline start none → 2016-05-23; baseline finish none → 2016-05-26 |
| 38 | Implementar Crudes RF Gerar Relátorio Financeiro | 2016-06-01 14:00 → 2016-06-07 (+6d) | 2016-06-03 13:30 → 2016-06-15 (+12d) | 7.5h → 25h |  | 7.12d → 3.31d | resources Jonas; Kelly; Felipe Alves; Ligia → Kelly; baseline start none → 2016-06-07; baseline finish none → 2016-06-15 |
| 39 | Implementar Crudes RF Controlar Aluguel de Vagas | 2016-05-30 14:30 → 2016-05-30 | 2016-06-01 14:00 → 2016-06-07 (+6d) | 7.5h → 25h |  |  | resources Felipe Alves; Kelly; Jonas; Ligia → Felipe Alves; baseline start none → 2016-05-30; baseline finish none → 2016-06-07 |
| 46 | Implementar Crudes RF Manter Histórico do Cliente | 2016-05-23 09:06 → 2016-05-20 (-3d) | 2016-05-24 14:36 → 2016-05-24 | 7.5h → 10h |  | 14.99d → 19.83d | resources Felipe Alves; Jonas; Kelly; Ligia → Felipe Alves; Kelly; baseline start none → 2016-05-20; baseline finish none → 2016-05-24 |
| 47 | Implementar Crudes RF Manter Fluxo de Caixa | 2016-06-13 09:00 → 2016-06-17 (+4d) | 2016-06-14 14:30 → 2016-06-21 (+7d) | 7.5h → 10h |  |  | resources Kelly; Ligia; Felipe Alves; Jonas → Ligia; Jonas; baseline start none → 2016-06-17; baseline finish none → 2016-06-21 |

## Version 3 (saved 2016-06-27)

Note of the change: Cronograma e Estimativa de Tamanho corrigidos

Last finish stays 2016-06-22. Complete tasks 21 → 31.

Changed:

| ID | Task | Start | Finish | Complete | Total float | Other |
| --- | --- | --- | --- | --- | --- | --- |
| 1 | **Projeto SIES - Sistema Integrado de Estacionamentos** |  | 2016-06-22 A | 51% → 100% | 0d → none |  |
| 20 | **Implementação** |  | 2016-06-22 A | 31% → 100% | 0d → none |  |
| 35 | **Release 3** | 2016-05-23 A | 2016-06-16 A | 0% → 100% | 1.09d → none |  |
| 36 | **Implementação** | 2016-05-23 A | 2016-06-15 A | 0% → 100% | 1.09d → none |  |
| 37 | Implementar Crudes RF Manter Credito Cliente | 2016-05-23 A | 2016-05-26 A | 0% → 100% | 1.09d → none |  |
| 38 | Implementar Crudes RF Gerar Relátorio Financeiro | 2016-06-07 A | 2016-06-15 A | 0% → 100% | 3.31d → none |  |
| 39 | Implementar Crudes RF Controlar Aluguel de Vagas | 2016-05-30 A | 2016-06-07 A | 0% → 100% | 0d → none |  |
| 40 | **Testes** | 2016-05-26 A | 2016-06-16 A | 0% → 100% | 3.56d → none |  |
| 41 | Teste Implementar Crudes RF Manter Credito Cliente | 2016-05-26 A | 2016-05-27 A | 0% → 100% | 17.84d → none |  |
| 42 | Teste Implementar Crudes RF Gerar Relátorio Financeiro | 2016-06-15 A | 2016-06-16 A | 0% → 100% | 3.19d → none |  |
| 43 | Teste Implementar Crudes RF Controlar Aluguel de Vagas | 2016-06-07 A | 2016-06-08 A | 0% → 100% | 9.44d → none |  |
| 44 | **Release 4** | 2016-05-20 A | 2016-06-22 A | 0% → 100% | 0d → none |  |
| 45 | **Implementação** | 2016-05-20 A | 2016-06-21 A | 0% → 100% | 0d → none |  |
| 46 | Implementar Crudes RF Manter Histórico do Cliente | 2016-05-20 A | 2016-05-24 A | 0% → 100% | 19.83d → none |  |
| 47 | Implementar Integração com o Paypal | 2016-06-17 A | 2016-06-21 A | 0% → 100% | 0d → none | was named Implementar Crudes RF Manter Fluxo de Caixa |
| 48 | **Testes** | 2016-05-24 A | 2016-06-22 A | 0% → 100% | 0d → none |  |
| 49 | Teste Crudes RF Manter Histórico do Cliente | 2016-05-24 A | 2016-05-25 A | 0% → 100% | 19.95d → none |  |
| 50 | Teste Implementação com o Paypal | 2016-06-21 A | 2016-06-22 A | 0% → 100% | 0d → none | was named Teste Crudes RF Manter Fluxo de Caixa |
